Task name,Start date,End date,Duration,Progress,Resources,Notes
"1.1 Собрать устав, ТЗ, WBS и матрицу занятости","2026-11-06","2026-11-08",3,0,"PM","Зависит от: —; параллельно: 2.1, 3.1"
"2.1 Создать Git-репозиторий и правила ветвления","2026-11-06","2026-11-07",2,0,"Lead Dev / PM","Зависит от: —; параллельно: 1.1"
"2.2 Настроить CI: сборка, линтер","2026-11-08","2026-11-10",3,0,"Lead Dev","Зависит от: 2.1; параллельно: 3.1"
"2.3 Настроить тестовый контур","2026-11-10","2026-11-12",3,0,"QA","Зависит от: 2.1; параллельно: 4.1"
"3.1 Собрать требования, Use Cases, DoD","2026-11-06","2026-11-10",5,0,"Аналитик","Зависит от: 1.1; параллельно: 1.1, 2.1"
"3.2 Сделать UI/UX-прототипы","2026-11-08","2026-11-12",5,0,"Аналитик","Зависит от: 3.1; параллельно: 4.1"
"4.1 Модуль «Авторизация и профиль»","2026-11-08","2026-11-15",8,0,"Backend + Frontend + QA","Зависит от: 3.1; параллельно: 4.2"
"4.1.1 Спроектировать API авторизации","2026-11-08","2026-11-10",3,0,"Backend","Зависит от: 3.1; параллельно: 4.1.2"
"4.1.2 Сверстать экраны входа и регистрации","2026-11-08","2026-11-11",4,0,"PM / Frontend","Зависит от: 3.2; параллельно: 4.1.1"
"4.1.3 Протестировать авторизацию","2026-11-12","2026-11-15",4,0,"QA","Зависит от: 4.1.1, 4.1.2; параллельно: 4.2"
"4.2 Модуль «Личный кабинет»","2026-11-11","2026-11-17",7,0,"Backend + Frontend + QA","Зависит от: 4.1; параллельно: 4.3"
"4.2.1 Спроектировать API списка опросов","2026-11-11","2026-11-13",3,0,"Backend","Зависит от: 3.1; параллельно: 4.2.2"
"4.2.2 Сверстать кабинет, фильтры, пагинацию","2026-11-11","2026-11-14",4,0,"PM / Frontend","Зависит от: 3.2; параллельно: 4.2.1"
"4.2.3 Протестировать кабинет","2026-11-14","2026-11-17",4,0,"QA","Зависит от: 4.2.1, 4.2.2; параллельно: 4.3"
"4.3 Модуль «Конструктор опросов»","2026-11-15","2026-11-22",8,0,"Backend + Frontend + QA","Зависит от: 4.2; параллельно: 4.4"
"4.3.1 Реализовать API CRUD опросов","2026-11-15","2026-11-18",4,0,"Backend","Зависит от: 3.1; параллельно: 4.3.2"
"4.3.2 Сверстать карточки вопросов","2026-11-15","2026-11-19",5,0,"PM / Frontend","Зависит от: 3.2; параллельно: 4.3.1"
"4.3.3 Протестировать конструктор","2026-11-19","2026-11-22",4,0,"QA","Зависит от: 4.3.1, 4.3.2; параллельно: 4.4"
"4.4 Модуль «Прохождение опроса»","2026-11-17","2026-11-24",8,0,"Backend + Frontend + QA","Зависит от: 4.3; параллельно: 4.5"
"4.4.1 Реализовать публичную ссылку и приём ответов","2026-11-17","2026-11-19",3,0,"Backend","Зависит от: 3.1; параллельно: 4.4.2"
"4.4.2 Сверстать прохождение и валидацию","2026-11-17","2026-11-20",4,0,"Lead Dev / Frontend","Зависит от: 3.2; параллельно: 4.4.1"
"4.4.3 Протестировать прохождение","2026-11-20","2026-11-24",5,0,"QA","Зависит от: 4.4.1, 4.4.2; параллельно: 4.5"
"4.5 Модуль «Живая статистика»","2026-11-22","2026-12-01",10,0,"Backend + Lead + QA","Зависит от: 4.4; параллельно: 4.6"
"4.5.1 Реализовать Socket.IO и агрегацию","2026-11-22","2026-11-25",4,0,"Backend","Зависит от: 4.4.1; параллельно: 4.5.2"
"4.5.2 Сделать графики и real-time интеграцию","2026-11-22","2026-11-27",6,0,"Lead Dev / Frontend","Зависит от: 3.2; параллельно: 4.5.1"
"4.5.3 Протестировать статистику","2026-11-27","2026-12-01",5,0,"QA","Зависит от: 4.5.1, 4.5.2; параллельно: 4.6"
"4.6 Модуль «Экспорт PDF/SPSS»","2026-11-24","2026-12-06",13,0,"Backend + Lead + QA","Зависит от: 4.5; параллельно: 5.1"
"4.6.1 Реализовать PDF-отчёт","2026-11-24","2026-11-28",5,0,"Backend","Зависит от: 4.5.1; параллельно: 4.6.2"
"4.6.2 Реализовать CSV для SPSS и UI экспорта","2026-11-24","2026-11-29",6,0,"Lead Dev / Frontend","Зависит от: 4.5.2; параллельно: 4.6.1"
"4.6.3 Протестировать экспорт","2026-11-29","2026-12-06",8,0,"QA","Зависит от: 4.6.1, 4.6.2; параллельно: 5.1"
"5.1 Провести регрессию, нагрузку и безопасность","2026-12-01","2026-12-15",15,0,"QA","Зависит от: 4.5, 4.6; параллельно: 5.2"
"5.2 Собрать портфолио и презентацию","2026-12-10","2026-12-19",10,0,"PM","Зависит от: 5.1; параллельно: 5.1"
"5.3 Провести демо и защиту","2026-12-20","2026-12-20",1,0,"Вся команда","Зависит от: 5.2; параллельно: —"
